# Game

Schedule from MS Project, 2018-12-03 to 2019-05-28, costs in zł, A marks actual dates.

## Calendars

- Pro: Mon-Fri 08:00-16:00; Sat-Sun off. Exceptions (off unless hours are given): 2018-12-24 to 2018-12-25 (2), 2019-04-22 (4), 2019-05-01 (5), 2019-05-03 (6).

## Resources

| Resource | Group | Unit | Rate | Cost per use |
| --- | --- | --- | --- | --- |
| Project Manager | Team |  | 90 |  |
| Regular Developer I | Team |  | 47 |  |
| Regular Developer II | Team |  | 47 |  |
| Grafik 2D | Team |  | 27 |  |
| Grafik 3D | Team |  | 36 |  |
| Scenarzysta | Team |  | 35 |  |
| Dźwiękowiec | Team |  | 40 |  |
| Orkiestra | Outside |  | 300 | 200 |
| Laptopy | Equipment | szt. | 4000 |  |
| Licencje | Equipment | szt. | 1000 |  |
| Mikrofony | Equipment | szt. | 400 |  |
| Game Designer | Team |  | 36 |  |
| Tester | Team |  | 40 |  |
| Tłumacz | Outside |  | 24 | 50 |

## Schedule

| ID | WBS | Task | Type | Duration | Start | Finish | Predecessors | Complete | Remaining | Total slack | Free slack | Resources | Work | Actual work | Cost | Actual cost |
| --- | --- | --- | --- | --- | --- | --- | --- | --- | --- | --- | --- | --- | --- | --- | --- | --- |
| 1 | 1 | **Etap I - Koncepcja** |  | 17.25d? | 2018-12-03 A | 2018-12-28 A |  | 100% |  |  |  |  | 441h | 441h | 22,122.5 | 22,122.5 |
| 2 | 1.1 | Dokument "Podstawowy opis uniwersum" |  | 11.56d | 2018-12-03 A | 2018-12-13 A |  | 100% |  |  |  | Scenarzysta; Project Manager | 185h | 185h | 11,562.5 | 11,562.5 |
| 3 | 1.2 | Dokument: "Opis mechaniki gry" |  | 5d | 2018-12-13 A | 2018-12-19 A | 2 | 100% |  |  |  | Game Designer; Project Manager | 80h | 80h | 5,040 | 5,040 |
| 4 | 1.3 | Szkice koncepcyjne |  | 10d? | 2018-12-13 A | 2018-12-26 A | 2 | 100% |  |  |  | Grafik 2D | 80h | 80h | 2,160 | 2,160 |
| 5 | 1.4 | Dokument: "Opis fabuły" |  | 12d? | 2018-12-13 A | 2018-12-28 A | 2 | 100% |  |  |  | Scenarzysta | 96h | 96h | 3,360 | 3,360 |
| 6 | 1.5 | Prezentacja stworzonej koncepcji | milestone | 0d | 2018-12-28 A | 2018-12-28 A | 3, 4, 5 | 100% |  |  |  | Project Manager |  |  |  |  |
| 7 | 2 | **Etap II - Prototyp** |  | 22.12d? | 2018-12-28 A | 2019-01-29 | 1 | 18% | 18.15d? | 0d |  |  | 312h | 56h | 47,552 | 37,880 |
| 8 | 2.1 | Wyposażenie biura |  | 2d | 2018-12-28 A | 2018-12-31 A | 6 | 100% |  |  |  | Project Manager; Laptopy [7 szt.]; Licencje [7 szt.] | 16h | 16h | 36,440 | 36,440 |
| 9 | 2.2 | Przygotowanie modeli zastępczych |  | 5d? | 2018-12-31 A | 2019-01-04 A | 8 | 100% |  |  |  | Grafik 3D | 40h | 40h | 1,440 | 1,440 |
| 10 | 2.3 | Przygotowanie tektur dla modeli |  | 7d | 2019-01-04 | 2019-01-15 | 9 |  |  | 0d |  | Grafik 2D | 56h |  | 1,512 |  |
| 11 | 2.4 | Stworzenie podstawowego UI |  | 5d | 2019-01-15 | 2019-01-22 | 10 |  |  | 0d |  | Grafik 2D | 40h |  | 1,080 |  |
| 12 | 2.5 | Dostosowanie silnika na potrzeby gry |  | 10d | 2019-01-01 | 2019-01-14 | 8 |  |  | 5.5d |  | Regular Developer I | 80h |  | 3,760 |  |
| 13 | 2.6 | Napisanie podstawowych skryptów |  | 5d | 2019-01-01 | 2019-01-07 | 8 |  |  | 10.5d |  | Regular Developer II | 40h |  | 1,880 |  |
| 14 | 2.7 | Stworzenie prototypu |  | 5d | 2019-01-22 | 2019-01-29 | 13, 12, 11 |  |  | 0d |  | Game Designer | 40h |  | 1,440 |  |
| 15 | 2.8 | Prezentacja prototypu | milestone | 0d | 2019-01-29 | 2019-01-29 | 14 |  |  | 0d |  | Project Manager |  |  |  |  |
| 16 | 3 | **Etap III - Faza produkcyjna** |  | 40d | 2019-01-29 | 2019-03-26 | 7 |  |  | 0d |  |  | 1600h |  | 82,080 |  |
| 17 | 3.1 | Praca nad silnikiem gry |  | 30d | 2019-01-29 | 2019-03-12 | 15 |  |  | 10d |  | Regular Developer I | 240h |  | 11,280 |  |
| 18 | 3.2 | Stworzenie tekstur |  | 20d | 2019-01-29 | 2019-02-26 | 15 |  |  | 5d | 0d | Grafik 2D | 160h |  | 4,320 |  |
| 19 | 3.3 | Stworzenie finalnej wersji UI |  | 15d | 2019-02-26 | 2019-03-19 | 18 |  |  | 5d |  | Grafik 2D | 120h |  | 3,240 |  |
| 20 | 3.4 | Stworzenie modeli |  | 20d | 2019-01-29 | 2019-02-26 | 15 |  |  | 5d | 0d | Grafik 3D | 160h |  | 5,760 |  |
| 21 | 3.5 | Stworzenie animacji |  | 15d | 2019-02-26 | 2019-03-19 | 20 |  |  | 5d |  | Grafik 3D | 120h |  | 4,320 |  |
| 22 | 3.6 | Nagranie utworów muzycznych |  | 10d | 2019-01-29 | 2019-02-12 | 15 |  |  | 30d |  | Orkiestra | 80h |  | 24,200 |  |
| 23 | 3.7 | Stworzenie skryptów |  | 20d | 2019-02-05 | 2019-03-05 | 15FS+5d |  |  | 15d |  | Regular Developer II | 160h |  | 7,520 |  |
| 24 | 3.8 | Nagranie dźwięków |  | 10d | 2019-02-05 | 2019-02-19 | 15FS+5d |  |  | 25d |  | Dźwiękowiec | 80h |  | 3,200 |  |
| 25 | 3.9 | Budowanie gry |  | 30d | 2019-02-05 | 2019-03-19 | 15FS+5d |  |  | 5d |  | Game Designer | 240h |  | 8,640 |  |
| 26 | 3.10 | Testy |  | 30d | 2019-02-12 | 2019-03-26 | 15FS+10d |  |  | 0d |  | Tester | 240h |  | 9,600 |  |
| 27 | 3.11 | Zakończenie fazy produkcji | milestone | 0d | 2019-03-26 | 2019-03-26 | 26 |  |  | 0d |  | Project Manager |  |  |  |  |

| ID | WBS | Task | Type | Duration | Start | Finish | Predecessors | Total slack | Free slack | Resources | Work | Cost |
| --- | --- | --- | --- | --- | --- | --- | --- | --- | --- | --- | --- | --- |
| 28 | 4 | **Etap IV - Faza wykończenia** |  | 25d | 2019-03-26 | 2019-05-02 | 16 | 0d |  |  | 792h | 31,148 |
| 29 | 4.1 | Integracja z FB |  | 5d | 2019-03-26 | 2019-04-02 | 27 | 12d | 0d | Regular Developer I | 40h | 1,880 |
| 30 | 4.2 | Poprawki skryptów |  | 10d | 2019-04-02 | 2019-04-16 | 29 | 12d |  | Regular Developer I; Game Designer | 160h | 6,640 |
| 31 | 4.3 | Obsługa statystyk |  | 5d | 2019-03-26 | 2019-04-02 | 27 | 7d | 0d | Regular Developer II | 40h | 1,880 |
| 32 | 4.4 | Poprawki do silnika |  | 15d | 2019-04-02 | 2019-04-24 | 31 | 7d |  | Regular Developer II | 120h | 5,640 |
| 33 | 4.5 | Dodanie lokalizacji (PL) |  | 7d | 2019-03-26 | 2019-04-04 | 27 | 13d | 0d | Tłumacz | 56h | 1,394 |
| 34 | 4.6 | Dodanie lokalizacji (FR) |  | 7d | 2019-04-04 | 2019-04-15 | 33 | 13d |  | Tłumacz | 56h | 1,394 |
| 35 | 4.7 | Optymalizacja modeli |  | 15d | 2019-03-26 | 2019-04-16 | 27 | 12d |  | Grafik 3D | 120h | 4,320 |
| 36 | 4.8 | Testy |  | 25d | 2019-03-26 | 2019-05-02 | 27 | 0d |  | Tester | 200h | 8,000 |
| 37 | 4.9 | Gold status | milestone | 0d | 2019-05-02 | 2019-05-02 | 36 | 0d |  | Project Manager |  |  |
| 38 | 5 | **Faza V - Faza utrzymania** |  | 15d | 2019-05-07 | 2019-05-28 | 28 | 0d |  |  | 480h | 20,400 |
| 39 | 5.1 | Obsługa zgłoszonych błędów |  | 15d | 2019-05-07 | 2019-05-28 | 37FS+2d | 0d |  | Tester | 120h | 4,800 |
| 40 | 5.2 | Przygotowanie poprawek |  | 15d | 2019-05-07 | 2019-05-28 | 37FS+2d | 0d |  | Regular Developer I | 120h | 5,640 |
| 41 | 5.3 | Stworzenie dodatkowej treści |  | 15d | 2019-05-07 | 2019-05-28 | 37FS+2d | 0d |  | Regular Developer II; Game Designer | 240h | 9,960 |
| 42 | 5.4 | Rozliczenie projektu | milestone | 0d | 2019-05-28 | 2019-05-28 | 39, 40, 41 | 0d |  | Project Manager |  |  |
